# planingIni

How a schedule from MS Project changed from version to version. A marks actual dates.

## Version 1 (saved 2018-05-17, file planingIni.mpp)

Note of the change: 1er commit

| ID | WBS | Task | Duration | Start | Finish | Predecessors | Complete | Total float |
| --- | --- | --- | --- | --- | --- | --- | --- | --- |
| 1 |  | Début | 0d | 2018-05-15 09:00 | 2018-05-15 09:00 |  |  |  |
| 2 | 2 | **Analyse** | 2.5d | 2018-05-15 10:40 A | 2018-05-18 10:00 | 1 | 50% | 1.42d |
| 3 |  | Planification initiale | 2h | 2018-05-15 10:40 A | 2018-05-15 13:55 | 1 | 75% | 0.19d |
| 4 |  | Documentation (introduction) | 3h | 2018-05-15 12:10 A | 2018-05-16 08:35 | 3 | 67% | 0.06d |
| 5 |  | Analyse du cdc | 2h | 2018-05-15 15:40 A | 2018-05-16 09:35 | 4 | 75% | 3.23d |
| 6 |  | Stratégie de test | 2h | 2018-05-16 09:05 A | 2018-05-16 11:20 A | 5 | 100% |  |
| 7 | 2.5 | **Concpetion** | 1.25d | 2018-05-16 11:20 A | 2018-05-17 15:40 | 6 | 40% | 1.42d |
| 8 |  | Diagramme interaction | 1h | 2018-05-16 11:20 A | 2018-05-16 13:35 A | 6 | 100% |  |
| 9 |  | diagramme code Arduino | 3h | 2018-05-16 13:35 A | 2018-05-16 16:50 A | 8 | 100% |  |
| 10 |  | Diagramme de code Application | 4h | 2018-05-16 16:50 | 2018-05-17 12:10 | 9 |  | 1.42d |
| 11 |  | Schéma montage Arduino | 2h | 2018-05-17 12:10 | 2018-05-17 15:40 | 10 |  | 1.42d |
| 12 |  | Rédaction Documentation | 3h | 2018-05-17 15:40 | 2018-05-18 10:00 | 7 |  | 1.42d |
| 13 | 3 | **Implémentation** | 5.75d | 2018-05-18 10:00 | 2018-06-01 08:05 | 2 |  | 1.42d |
| 14 |  | Assemblage Arduino | 3h | 2018-05-18 10:00 | 2018-05-18 14:15 | 2 |  | 1.42d |
| 15 |  | Code application | 4h | 2018-05-18 14:15 | 2018-05-22 15:05 | 14 |  | 1.42d |
| 16 |  | Code Arduino | 4h | 2018-05-22 15:20 | 2018-05-23 11:30 | 15 |  | 1.42d |
| 17 |  | Tests Relation Arduino-Application | 2h | 2018-05-23 11:30 | 2018-05-23 14:45 | 16 |  | 1.42d |
| 18 |  | Corrections | 4h | 2018-05-23 14:45 | 2018-05-24 10:20 | 17 |  | 1.42d |
| 19 | 3.6 | **Recherche skype** | 2.25d | 2018-05-24 10:20 | 2018-05-30 11:40 |  |  | 1.42d |
| 20 |  | Recherche API Skype | 4h | 2018-05-24 10:20 | 2018-05-24 15:50 | 18 |  | 1.42d |
| 21 |  | Recherche Connecteur C#-Skype | 3h | 2018-05-24 15:50 | 2018-05-25 10:10 | 20 |  | 1.42d |
| 22 |  | Recherche récupèrer statut Skype | 4h | 2018-05-25 10:10 | 2018-05-29 11:00 | 21 |  | 1.42d |
| 23 |  | Changer statut skype | 4h | 2018-05-29 11:00 | 2018-05-30 08:25 | 22 |  | 1.42d |
| 24 |  | Recherche détéction d'erreur Skype | 3h | 2018-05-30 08:25 | 2018-05-30 11:40 | 23 |  | 1.42d |
| 25 | 3.7 | **Code Skype** | 0.88d | 2018-05-30 11:40 | 2018-05-31 11:30 | 19 |  | 1.42d |
| 26 |  | Connexion Skype | 3h | 2018-05-30 11:40 | 2018-05-30 16:10 | 19 |  | 1.42d |
| 27 |  | Récupèration statut | 2h | 2018-05-30 16:10 | 2018-05-31 09:15 | 26 |  | 1.42d |
| 28 |  | Changement statut | 2h | 2018-05-31 09:15 | 2018-05-31 11:30 | 27 |  | 1.42d |
| 29 |  | Test et Debug Skype | 4h | 2018-05-31 11:30 | 2018-06-01 08:05 | 28 |  | 1.42d |
| 30 | 4 | **Tests et corrections** | 1.25d | 2018-06-01 08:05 | 2018-06-06 08:35 | 13 |  | 1.42d |
| 31 |  | Tests complets | 3h | 2018-06-01 08:05 | 2018-06-01 11:20 | 13 |  | 1.42d |
| 32 |  | Debug complet | 3h | 2018-06-01 11:20 | 2018-06-05 11:10 | 31 |  | 1.42d |
| 33 |  | Test complets | 2h | 2018-06-05 11:10 | 2018-06-05 14:25 | 32 |  | 1.42d |
| 34 |  | Documentation (tests) | 2h | 2018-06-05 14:25 | 2018-06-06 08:35 | 33 |  | 1.42d |
| 35 |  | Documentation (fin rédaction) | 4h | 2018-06-06 08:35 | 2018-06-06 14:05 | 34 |  | 1.42d |
| 36 |  | Documentation (finalisation) | 4h | 2018-06-06 14:05 | 2018-06-07 09:25 | 35 |  | 1.42d |
| 37 |  | Fin | 0d | 2018-06-12 09:00 | 2018-06-12 09:00 |  |  |  |

## Version 2 (saved 2018-05-24, file planing.mpp)

Note of the change: conception terminée

Last finish stays 2018-06-12. Complete tasks 3 → 14.

Added:

| ID | Task | Duration | Start | Finish | Predecessors |
| --- | --- | --- | --- | --- | --- |
| 14 | **Recherches Skype** | 2.25d | 2018-05-18 10:00 A | 2018-05-24 11:20 A | 12 |
| 16 | Installation Skype | 4h | 2018-05-22 10:50 A | 2018-05-23 08:15 A | 15 |

Removed: 19 Recherche skype

Changed:

| ID | Task | Start | Finish | Duration | Complete | Total float | Predecessors |
| --- | --- | --- | --- | --- | --- | --- | --- |
| 2 | **Analyse** |  |  |  | 50% → 94% | 1.42d → 0d |  |
| 3 | Planification initiale |  | 2018-05-15 13:55 A |  | 75% → 100% | 0.19d → none |  |
| 4 | Documentation (introduction) |  | 2018-05-16 08:35 A |  | 67% → 100% | 0.06d → none |  |
| 7 | **Concpetion** |  | 2018-05-17 15:40 A |  | 40% → 100% | 1.42d → none |  |
| 10 | Diagramme de code Application | 2018-05-16 16:50 A | 2018-05-17 12:10 A |  | 0% → 100% | 1.42d → none |  |
| 11 | Schéma montage Arduino | 2018-05-17 12:10 A | 2018-05-17 15:40 A |  | 0% → 100% | 1.42d → none |  |
| 12 | Rédaction Documentation | 2018-05-17 15:40 A |  |  | 0% → 75% | 1.42d → 0d |  |
| 13 | **Implémentation** | 2018-05-18 10:00 A |  |  | 0% → 46% |  |  |
| 15 | Recherche API Skype | 2018-05-24 10:20 → 2018-05-18 10:00 A (-6d) | 2018-05-24 15:50 → 2018-05-22 10:50 A (-2d) |  | 0% → 100% | 1.42d → none | 25 → 12 |
| 17 | Recherche Connecteur C#-Skype | 2018-05-24 15:50 → 2018-05-23 08:15 A (-1d) | 2018-05-25 10:10 → 2018-05-23 11:30 A (-2d) |  | 0% → 100% | 1.42d → none | 15 → 16 |
| 18 | Recherche récupèrer statut Skype | 2018-05-25 10:10 → 2018-05-23 11:30 A (-2d) | 2018-05-29 11:00 → 2018-05-23 14:45 A (-6d) | 4h → 2h | 0% → 100% | 1.42d → none |  |
| 19 | Changer statut skype | 2018-05-29 11:00 → 2018-05-23 14:45 A (-6d) | 2018-05-30 08:25 → 2018-05-24 08:05 A (-6d) | 4h → 2h | 0% → 100% | 1.42d → none |  |
| 20 | Recherche détéction d'erreur Skype | 2018-05-30 08:25 → 2018-05-24 08:05 A (-6d) | 2018-05-30 11:40 → 2018-05-24 11:20 A (-6d) |  | 0% → 100% | 1.42d → none |  |
| 21 | Assemblage Arduino | 2018-05-18 10:00 → 2018-05-24 11:20 A (+6d) | 2018-05-18 14:15 → 2018-05-24 15:50 A (+6d) |  | 0% → 100% | 1.42d → none | 2 → 14 |
| 22 | Code Arduino | 2018-05-22 15:20 → 2018-05-24 15:50 (+2d) | 2018-05-23 11:30 → 2018-05-25 11:10 (+2d) |  |  |  | 23 → 21 |
| 23 | Code application | 2018-05-18 14:15 → 2018-05-25 11:10 (+7d) | 2018-05-22 15:05 → 2018-05-29 12:00 (+7d) |  |  |  | 21 → 22 |
| 24 | Tests Relation Arduino-Application | 2018-05-23 11:30 → 2018-05-29 12:00 (+6d) | 2018-05-23 14:45 → 2018-05-29 15:30 (+6d) |  |  |  | 22 → 23 |
| 25 | Corrections | 2018-05-23 14:45 → 2018-05-29 15:30 (+6d) | 2018-05-24 10:20 → 2018-05-30 11:40 (+6d) |  |  |  |  |
| 26 | **Code Skype** |  |  |  |  |  | Recherche skype → 25 |
| 27 | Connexion Skype |  |  |  |  |  | Recherche skype → 25 |

## Version 3 (saved 2018-05-25, file planing.mpp)

Note of the change: code Arduino/ fin semaine

Last finish stays 2018-06-12.

Changed:

| ID | Task | Start | Complete |
| --- | --- | --- | --- |
| 13 | **Implémentation** |  | 46% → 52% |
| 22 | Code Arduino | 2018-05-24 15:50 A | 0% → 75% |

## Version 4 (saved 2018-05-30, file planing.mpp)

Note of the change: code app

Last finish stays 2018-06-12. Complete tasks 14 → 16.

Changed:

| ID | Task | Start | Finish | Complete | Total float |
| --- | --- | --- | --- | --- | --- |
| 13 | **Implémentation** |  |  | 52% → 67% |  |
| 23 | Code application | 2018-05-25 11:10 A | 2018-05-29 12:00 A | 0% → 100% | 1.42d → none |
| 26 | **Code Skype** | 2018-05-30 11:40 A |  | 0% → 43% |  |
| 27 | Connexion Skype | 2018-05-30 11:40 A | 2018-05-30 16:10 A | 0% → 100% | 1.42d → none |

## Version 5 (saved 2018-06-01, file planing.mpp)

Note of the change: App-Skype et switch mode communication

Last finish stays 2018-06-12. Complete tasks 16 → 20.

Changed:

| ID | Task | Start | Finish | Complete | Total float |
| --- | --- | --- | --- | --- | --- |
| 13 | **Implémentation** |  |  | 67% → 89% |  |
| 24 | Tests Relation Arduino-Application | 2018-05-29 12:00 A | 2018-05-29 15:30 A | 0% → 100% | 0d → none |
| 25 | Corrections | 2018-05-29 15:30 A | 2018-05-30 11:40 A | 0% → 100% | 0d → none |
| 26 | **Code Skype** |  | 2018-05-31 11:30 A | 43% → 100% | 1.42d → none |
| 28 | Récupèration statut | 2018-05-30 16:10 A | 2018-05-31 09:15 A | 0% → 100% | 1.42d → none |
| 29 | Changement statut | 2018-05-31 09:15 A | 2018-05-31 11:30 A | 0% → 100% | 1.42d → none |

## Version 6 (saved 2018-06-06, file planing.mpp)

Note of the change: App

Last finish stays 2018-06-12. Complete tasks 20 → 21.

Changed:

| ID | Task | Start | Finish | Complete | Total float |
| --- | --- | --- | --- | --- | --- |
| 13 | **Implémentation** |  |  | 89% → 98% |  |
| 30 | Test et Debug Skype | 2018-05-31 11:30 A | 2018-06-01 08:05 A | 0% → 100% | 1.42d → none |

## Version 7 (saved 2018-06-12, file planing.mpp)

Note of the change: final

Last finish stays 2018-06-12. Complete tasks 21 → 32.

Added:

| ID | Task | Duration | Start | Finish | Predecessors |
| --- | --- | --- | --- | --- | --- |
| 5 | Analyse du CDC | 2h | 2018-05-16 08:35 A | 2018-05-16 10:50 A | 4 |
| 15 | Recherches API Skype for business | 3.5h | 2018-05-18 14:45 A | 2018-05-22 15:05 A | 14 |
| 21 | Communication | 2.5h | 2018-05-24 15:50 A | 2018-05-25 09:25 A | 19 |
| 22 | LED | 2h | 2018-05-25 09:25 A | 2018-05-25 11:40 A | 21 |
| 23 | Divers | 3.5h | 2018-05-25 11:40 A | 2018-05-29 12:00 A | 22 |
| 25 | Divers | 2.5h | 2018-05-29 12:00 A | 2018-05-29 16:00 A | 20 |
| 26 | UI | 4h | 2018-05-29 16:00 A | 2018-05-30 12:10 A | 25 |
| 27 | Communication | 4h | 2018-05-30 12:10 A | 2018-05-31 08:45 A | 26 |
| 28 | Gestion erreurs | 4h | 2018-05-31 08:45 A | 2018-05-31 14:15 A | 27 |
| 29 | Test relation Arduino-Application | 1.5h | 2018-05-31 14:15 A | 2018-05-31 16:00 A | 24 |
| 35 | Test Skype | 2h | 2018-05-31 11:30 A | 2018-05-31 14:45 A | 34 |

Removed: 5 Analyse du cdc; 8 Diagramme interaction; 19 Changer statut skype; 20 Recherche détéction d'erreur Skype; 24 Tests Relation Arduino-Application; 33 Debug complet; 34 Test complets

Changed:

| ID | Task | Start | Finish | Duration | Complete | Total float | Predecessors | Other |
| --- | --- | --- | --- | --- | --- | --- | --- | --- |
| 2 | **Analyse** |  | 2018-05-18 10:00 A |  | 94% → 100% | 0d → none |  |  |
| 6 | Stratégie de test | 2018-05-16 09:05 A → 2018-05-16 10:50 A | 2018-05-16 11:20 A → 2018-05-16 14:05 A |  |  |  | Analyse du cdc → 5 |  |
| 7 | **Concpetion** | 2018-05-16 11:20 A → 2018-05-16 13:35 A | 2018-05-17 15:40 A → 2018-05-17 14:55 A | 1.25d → 1.06d |  |  |  |  |
| 8 | diagramme code Arduino |  | 2018-05-16 16:50 A → 2018-05-16 16:20 A | 3h → 2.5h |  |  | Diagramme interaction → 6 |  |
| 9 | Diagramme de code Application |  | 2018-05-17 12:10 A → 2018-05-17 10:40 A | 4h → 2.5h |  |  |  |  |
| 10 | Schéma montage Arduino |  | 2018-05-17 15:40 A → 2018-05-17 14:55 A | 2h → 1.5h |  |  |  |  |
| 11 | Rédaction Documentation |  | 2018-05-18 10:00 A |  | 75% → 100% | 0d → none |  |  |
| 12 | **Implémentation** |  | 2018-06-01 08:05 A |  | 98% → 100% | 1.42d → none |  |  |
| 13 | **Recherches Skype** |  | 2018-05-24 11:20 A → 2018-05-23 14:45 A (-1d) | 2.25d → 1.62d |  |  |  |  |
| 14 | Recherches API Skype |  | 2018-05-22 10:50 A → 2018-05-18 14:45 A (-4d) | 4h → 3.5h |  |  |  | was named Recherche API Skype |
| 16 | Installation Skype for business |  |  |  |  |  | 14 → 15 | was named Installation Skype |
| 17 | Installation SDK |  | 2018-05-23 11:30 A → 2018-05-23 10:30 A | 3h → 2h |  |  |  | was named Recherche Connecteur C#-Skype |
| 20 | **Code Arduino** |  | 2018-05-25 11:10 → 2018-05-29 12:00 A (+4d) | 4h → 1d | 75% → 100% | 1.42d → none |  |  |
| 24 | **Code application** | 2018-05-25 11:10 A → 2018-05-29 12:00 A (+4d) | 2018-05-29 12:00 A → 2018-05-31 14:15 A (+2d) | 4h → 1.81d |  |  |  |  |
| 30 | **Corrections** | 2018-05-29 15:30 A → 2018-05-30 11:40 A (+1d) | 2018-05-30 11:40 A → 2018-06-01 08:05 A (+2d) | 4h → 1.38d |  |  | Tests Relation Arduino-Application → 24 |  |
| 31 | **Code Skype** |  | 2018-05-31 11:30 A → 2018-06-01 08:05 A (+1d) | 0.88d → 1.38d |  |  | 30 → 24 |  |
| 32 | Connexion |  | 2018-05-30 16:10 A → 2018-05-30 15:40 A | 3h → 2.5h |  |  | 30 → 24 | was named Connexion Skype |
| 36 | Debug Skype |  |  |  |  |  | 34 → 35 | was named Test et Debug Skype |
| 37 | **Tests et corrections** | 2018-06-01 08:05 A | 2018-06-06 08:35 → 2018-06-01 13:35 A (-5d) | 1.25d → 0.5d | 0% → 100% | 1.42d → none |  |  |
| 38 | Tests complets | 2018-06-01 08:05 A | 2018-06-01 11:20 A |  | 0% → 100% | 1.42d → none |  |  |
| 39 | Documentation (tests) | 2018-06-05 14:25 → 2018-06-01 11:20 A (-4d) | 2018-06-06 08:35 → 2018-06-01 13:35 A (-5d) | 2h → 1h | 0% → 100% | 1.42d → none | Test complets → 38 |  |
| 40 | Documentation (fin rédaction) | 2018-06-06 08:35 → 2018-06-01 13:35 A (-5d) | 2018-06-06 14:05 → 2018-06-05 14:25 A (-1d) |  | 0% → 100% | 1.42d → none |  |  |
| 41 | Documentation (finalisation) | 2018-06-06 14:05 → 2018-06-05 14:25 A (-1d) | 2018-06-07 09:25 → 2018-06-06 08:35 A (-1d) | 4h → 2h | 0% → 100% | 1.42d → none |  |  |
| 42 | Fin | 2018-06-12 09:00 A | 2018-06-12 09:00 A |  | 0% → 100% |  |  |  |
